# Current Project Plan

Schedule from MS Project, 2018-03-26 to 2018-07-13, A marks actual dates.

## Calendars

- Standard: Mon-Fri 08:00-12:00, 13:00-17:00; Sat-Sun off. Exceptions (off unless hours are given): 2018-05-26 to 2018-05-27 08:00-12:00, 13:00-17:00.

## Resources

| Resource |
| --- |
| Management |
| Project Manager |
| Analyst |
| Developer |
| Testers |
| Trainer |
| Technical Writer |
| Deployment Team |
| Developers |
| User |

## Schedule

| ID | WBS | Task | Type | Duration | Start | Finish | Predecessors | Complete | Remaining | Total slack | Free slack | Constraint | Resources | Work | Actual work |
| --- | --- | --- | --- | --- | --- | --- | --- | --- | --- | --- | --- | --- | --- | --- | --- |
| 1 | 1 | **Design** |  | 14.5d | 2018-03-26 A | 2018-04-13 A |  | 100% |  |  |  |  |  | 120h | 120h |
| 2 | 1.1 | Develop functional specifications |  | 7d | 2018-03-26 A | 2018-04-03 A |  | 100% |  |  |  | start no earlier than 2018-03-26 | Analyst | 56h | 56h |
| 3 | 1.2 | Develop prototype based on functional specifications |  | 4d | 2018-04-04 A | 2018-04-09 A | 2 | 100% |  |  |  |  | Analyst | 32h | 32h |
| 4 | 1.3 | Incorporate feedback into functional specifications |  | 3d | 2018-04-10 A | 2018-04-12 A | 3 | 100% |  |  |  |  | Management | 24h | 24h |
| 5 | 1.4 | Obtain approval to proceed |  | 4h | 2018-04-13 A | 2018-04-13 A | 4 | 100% |  |  |  |  | Management; Project Manager | 8h | 8h |
| 6 | 1.5 | Design complete | milestone | 0d | 2018-04-13 A | 2018-04-13 A | 5 | 100% |  |  |  |  |  |  |  |
| 7 | 2 | **Development** |  | 25d | 2018-04-13 A | 2018-05-18 A |  | 100% |  |  |  |  |  | 800h | 800h |
| 8 | 2.1 | Develop code |  | 25d | 2018-04-13 A | 2018-05-18 A | 6 | 100% |  |  |  |  | Developers [400%] | 800h | 800h |
| 9 | 2.2 | Development complete | milestone | 0d | 2018-05-18 A | 2018-05-18 A | 8 | 100% |  |  |  |  |  |  |  |
| 10 | 3 | **Testing** |  | 57.5d | 2018-04-13 A | 2018-06-29 |  | 34% | 37.81d | 0d |  |  |  | 292h | 100h |
| 11 | 3.1 | Develop unit and integration test plans |  | 8d | 2018-04-13 A | 2018-04-25 A | 6 | 100% |  |  |  |  | Testers | 64h | 64h |
| 12 | 3.2 | **Unit Testing** |  | 20.5d | 2018-05-18 A | 2018-06-13 |  | 27% | 14.91d | 0d |  |  |  | 132h | 36h |
| 13 | 3.2.1 | Test component modules to product specifications |  | 11.5d | 2018-05-18 A | 2018-06-06 | 8, 43 | 39% | 7d | 0d |  | finish no earlier than 2018-06-04 | Testers | 92h | 36h |
| 14 | 3.2.2 | Modify and retest code |  | 5d | 2018-06-07 | 2018-06-13 | 13 |  |  | 0d |  |  | Testers | 40h |  |
| 15 | 3.2.3 | Unit testing complete | milestone | 0d | 2018-06-13 | 2018-06-13 | 14 |  |  | 0d |  |  |  |  |  |
| 16 | 3.3 | **Integration Testing** |  | 12d | 2018-06-14 | 2018-06-29 |  |  |  | 0d |  |  |  | 96h |  |
| 17 | 3.3.1 | Integration test |  | 10d | 2018-06-14 | 2018-06-27 | 15 |  |  | 0d |  |  | Testers | 80h |  |
| 18 | 3.3.2 | Modified and retest code |  | 2d | 2018-06-28 | 2018-06-29 | 17 |  |  | 0d |  |  | Testers | 16h |  |
| 19 | 3.3.3 | Integration testing complete | milestone | 0d | 2018-06-29 | 2018-06-29 | 18 |  |  | 0d |  |  |  |  |  |
| 20 | 4 | **Training** |  | 45d | 2018-04-13 A | 2018-06-13 |  | 36% | 28.75d | 12.5d |  |  |  | 288h | 104h |
| 21 | 4.1 | Develop training specifications |  | 4d | 2018-04-13 A | 2018-04-19 A | 6 | 100% |  |  |  |  | Trainer; User | 64h | 64h |
| 22 | 4.2 | Develop training materials |  | 2.3w | 2018-05-18 A | 2018-06-08 | 21, 9, 43 | 22% | 1.8w | 12.5d | 0d | finish no earlier than 2018-06-04 | Trainer; User | 184h | 40h |
| 23 | 4.3 | Finalize training materials |  | 2.5d | 2018-06-11 | 2018-06-13 | 22 |  |  | 12.5d | 0d |  | Trainer; User | 40h |  |
| 24 | 4.4 | Training materials complete | milestone | 0d | 2018-06-13 | 2018-06-13 | 23 |  |  | 12.5d |  |  |  |  |  |

| ID | WBS | Task | Type | Duration | Start | Finish | Predecessors | Complete | Remaining | Total slack | Free slack | Constraint | Resources | Work | Actual work |
| --- | --- | --- | --- | --- | --- | --- | --- | --- | --- | --- | --- | --- | --- | --- | --- |
| 25 | 5 | **Documentation** |  | 44.5d | 2018-04-13 A | 2018-06-12 |  | 64% | 16.15d | 12d |  |  |  | 248h | 158h |
| 26 | 5.1 | Develop Help specification |  | 1d | 2018-04-13 A | 2018-04-16 A | 6 | 100% |  |  |  |  | Technical Writer | 8h | 8h |
| 27 | 5.2 | Develop Help system |  | 3w | 2018-05-02 A | 2018-05-22 A | 26, 8FS-5% | 100% |  |  |  |  | Technical Writer | 120h | 120h |
| 28 | 5.3 | Develop user manuals |  | 3w | 2018-05-23 A | 2018-06-12 | 8FS-5%, 27 | 25% | 2.25w | 12d | 0d |  | Technical Writer | 120h | 30h |
| 29 | 5.4 | Documentation complete | milestone | 0d | 2018-06-12 | 2018-06-12 | 28 |  |  | 7.5d | 0d |  |  |  |  |
| 30 | 6 | **Pilot** |  | 20d | 2018-06-13 | 2018-07-10 |  |  |  | 0d |  |  |  | 56h |  |
| 31 | 6.1 | Develop software delivery mechanism |  | 1d | 2018-06-13 | 2018-06-13 | 29 |  |  | 12d |  |  |  |  |  |
| 32 | 6.2 | Install/deploy software |  | 1d | 2018-07-02 | 2018-07-02 | 19, 31, 24 |  |  | 0d |  |  | Deployment Team | 8h |  |
| 33 | 6.3 | Obtain user feedback |  | 1w | 2018-07-03 | 2018-07-09 | 32 |  |  | 0d |  |  | Deployment Team | 40h |  |
| 34 | 6.4 | Evaluate testing information |  | 1d | 2018-07-10 | 2018-07-10 | 33 |  |  | 0d |  |  | Deployment Team | 8h |  |
| 35 | 6.5 | Pilot complete | milestone | 0d | 2018-07-10 | 2018-07-10 | 34 |  |  | 0d |  |  |  |  |  |
| 36 | 7 | **Deployment** |  | 3d | 2018-07-11 | 2018-07-13 |  |  |  | 0d |  |  |  | 24h |  |
| 37 | 7.1 | Develop deployment methodology |  | 1d | 2018-07-11 | 2018-07-11 | 35 |  |  | 0d |  |  | Deployment Team | 8h |  |
| 38 | 7.2 | Train support staff |  | 1d | 2018-07-12 | 2018-07-12 | 37 |  |  | 0d |  |  | Deployment Team | 8h |  |
| 39 | 7.3 | Deploy software |  | 1d | 2018-07-13 | 2018-07-13 | 38 |  |  | 0d |  |  | Deployment Team | 8h |  |
| 40 | 7.4 | Deployment complete | milestone | 0d | 2018-07-13 | 2018-07-13 | 39 |  |  | 0d |  |  |  |  |  |
| 41 | 8 | **Relocation** |  | 3d | 2018-05-26 | 2018-05-28 |  |  |  | 0d |  |  |  | 24h |  |
| 42 | 8.1 | Hire bizdojo office space |  | 2d | 2018-05-26 | 2018-05-27 |  |  |  | 0d |  | start no earlier than 2018-05-26 | Project Manager | 16h |  |
| 43 | 8.2 | Purchase HP laptops |  | 1d | 2018-05-28 | 2018-05-28 | 42 |  |  | 0d |  | start no earlier than 2018-05-27 | Project Manager | 8h |  |
